# New OSG PKI Project

Schedule from MS Project, 2012-03-12 to 2014-01-27, A marks actual dates.
FNAL

## Calendars

- Standard: Mon-Fri 08:00-12:00, 13:00-17:00; Sat-Sun off. Exceptions (off unless hours are given): 2012-11-21 to 2012-11-23 (Thanksgiving), 2012-12-24 to 2013-01-01 (Christmas Holiday).

## Resources

| Resource |
| --- |
| Welch |
| Basney |
| Altunay |
| Fischer |
| Sehgal |
| Padmanabhan |

## Schedule

| ID | WBS | Task | Duration | Start | Finish | Predecessors | Complete | Remaining | Total slack | Free slack | InCharge |
| --- | --- | --- | --- | --- | --- | --- | --- | --- | --- | --- | --- |
| 1 | 1 | **Planning Phase** | 50d | 2012-03-12 A | 2012-05-18 |  | 91% | 4.38d | 0d |  | Welch |
| 2 | 1.1 | Development and Deployment Plan | 30d | 2012-03-12 A | 2012-04-20 A |  | 100% |  |  |  | Hayashi, Fischer |
| 3 | 1.2 | Document Acceptance Test Plan | 15d | 2012-04-23 A | 2012-05-11 A | 2 | 100% |  |  |  | Welch, Roy |
| 4 | 1.3 | Document Transition Plan | 15d | 2012-04-23 A | 2012-05-11 A | 2 | 100% |  |  |  | Welch, Pordes |
| 5 | 1.4 | Document Communications Plan | 10d | 2012-04-23 A | 2012-05-04 A | 2 | 100% |  |  |  | Pordes |
| 6 | 1.5 | Document Training Plan | 10d | 2012-04-23 A | 2012-05-04 A | 2 | 100% |  |  |  | Altunay |
| 7 | 1.6 | Define Contingency Plan (for the event that the DigiCert CA becomes unavailable) | 15d | 2012-04-23 A | 2012-05-11 | 2 | 50% | 7.5d | 4.5d | 0d | Chadwick |
| 8 | 1.7 | Baseline WBS and Timeline | 5d | 2012-05-14 A | 2012-05-18 A | 6, 2, 3, 4, 5, 7 | 100% |  |  |  | Sehgal |
| 9 | 1.8 | Finalize & Sign Contract between DigiCert & Indiana | 20d | 2012-04-23 A | 2012-05-18 | 2 | 85% | 3d | 0d |  | Welch |
| 10 | 2 | **Development Phase** | 80d | 2012-05-21 | 2012-09-07 |  |  |  | 0d |  | Welch |
| 11 | 2.1 | **Develop the OSG CA web service front-end and integrate with the DigiCert CA** | 65d | 2012-05-21 | 2012-08-17 |  |  |  | 0d |  | Hayashi |
| 12 | 2.1.1 | Develop software and associated documentation | 30d | 2012-05-21 | 2012-06-29 | 1 |  |  | 0d |  | Fischer, TBD |
| 13 | 2.1.2 | Develop and package new CLI scripts | 10d | 2012-07-02 | 2012-07-13 | 12 |  |  | 0d |  | Fischer, TBD |
| 14 | 2.1.3 | Review by the OSG software area of the resulting code and support documentation. | 10d | 2012-07-16 | 2012-07-27 | 12, 13 |  |  | 0d |  | Roy |
| 15 | 2.1.4 | Developer Testing of New Solutions | 15d | 2012-07-30 | 2012-08-17 | 14 |  |  | 0d |  | Hayashi, TBD |
| 16 | 2.2 | Define changes to operational procedures, policy and other changes defined in the Planning phase. | 15d | 2012-05-21 | 2012-06-08 | 1 |  |  | 65d |  | Quick |
| 17 | 2.3 | Conduct Acceptance Testing of System | 15d | 2012-08-20 | 2012-09-07 | 11 |  |  | 0d |  | Hayashi, Deximo, TBD, Roy |
| 18 | 2.4 | Update Transition Plan | 3d | 2012-08-20 | 2012-08-22 | 11 |  |  | 12d |  | Welch |
| 19 | 2.5 | Update Training Plan | 3d | 2012-08-20 | 2012-08-22 | 11 |  |  | 12d |  | Altunay |
| 20 | 2.6 | Update Communications Plan | 3d | 2012-08-20 | 2012-08-22 | 11 |  |  | 12d |  | Pordes |
| 21 | 3 | **Deployment Phase** | 55d | 2012-07-16 | 2012-09-28 |  |  |  | 0d |  | Welch |
| 22 | 3.1 | **Deploy the OSG CA - the OSG web front-end and operations components** | 55d | 2012-07-16 | 2012-09-28 |  |  |  | 0d |  | Hayashi |
| 23 | 3.1.1 | Procure Hardware | 15d | 2012-07-16 | 2012-08-03 | 13 |  |  | 20d | 0d | Quick |
| 24 | 3.1.2 | New Server Setup | 5d | 2012-08-06 | 2012-08-10 | 23 |  |  | 20d |  | Quick |
| 25 | 3.1.3 | Install Software | 5d | 2012-09-10 | 2012-09-14 | 17, 24 |  |  | 0d |  | Hayashi |
| 26 | 3.1.4 | Friendly User Testing | 10d | 2012-09-17 | 2012-09-28 | 25 |  |  | 0d |  | Hayashi, Welch, Deximo, TBD |
| 27 | 3.2 | Execute Training Plan for OSG Staff | 15d | 2012-09-10 | 2012-09-28 | 10 |  |  | 0d |  | Altunay |
| 28 | 3.3 | Implement changes to operational procedures, policy and other changes defined in the Planning phase. | 10d | 2012-09-10 | 2012-09-21 | 10 |  |  | 5d |  | Deximo |
| 29 | 3.4 | Implement contingency Plan elements for the event that the DigiCert CA becomes unavailable | 10d | 2012-09-10 | 2012-09-21 | 10 |  |  | 5d |  | Altunay |
| 30 | 3.5 | Transfer new software packages ownership to OSG Software team | 5d | 2012-09-10 | 2012-09-14 | 10 |  |  | 10d |  | Hayashi, TBD, Roy |

| ID | WBS | Task | Duration | Start | Finish | Predecessors | Total slack | InCharge |
| --- | --- | --- | --- | --- | --- | --- | --- | --- |
| 31 | 4 | **Transition** | 75d | 2012-10-01 | 2013-01-25 |  | 0d | Welch |
| 32 | 4.1 | Complete Execution of Communications Plan | 4d | 2012-10-01 | 2012-10-04 | 21 | 71d | Pordes |
| 33 | 4.2 | Execute Training Plan for User Community | 20d | 2012-10-01 | 2012-10-26 | 21 | 55d | Altunay |
| 34 | 4.3 | Issue DigiCerts certs for "friendly" user community | 5d | 2012-10-01 | 2012-10-05 | 21 | 0d | Hayashi, TBD |
| 35 | 4.4 | Regression test OSG functionality using new Certs | 50d | 2012-10-08 | 2012-12-19 | 34 | 0d | Altunay |
| 36 | 4.5 | Perform test Audits with DigiCert | 5d | 2012-10-08 | 2012-10-12 | 34 | 65d | Welch |
| 37 | 4.6 | Test End-to-End Contingency Plan | 20d | 2012-10-08 | 2012-11-02 | 34 | 30d | Altunay, Deximo |
| 38 | 4.7 | Management Readiness Review | 20d | 2012-12-20 | 2013-01-25 | 35, 37 | 0d | Welch |
| 39 | 5 | **First Year of Operations** | 261d | 2013-01-28 | 2014-01-27 |  | 0d | Quick, Welch |
| 40 | 5.1 | Start issueing new and renewal certs from DigiCert | 1d | 2013-01-28 | 2013-01-28 | 31 | 260d | Hayashi, TBD |
| 41 | 5.2 | **"Drain" all active certs from DOEGrids CA** | 260d | 2013-01-28 | 2014-01-24 |  | 0d | Esnet |
| 42 | 5.2.1 | Stop issueing new certs from DOEGrids | 1d | 2013-01-28 | 2013-01-28 | 31 | 259d | Esnet |
| 43 | 5.2.2 | Continue issuing CRLs for DOEGrids Certs | 260d | 2013-01-28 | 2014-01-24 | 31 | 0d | Esnet |
| 44 | 5.3 | Shut off DEOGrid CA | 1d | 2014-01-27 | 2014-01-27 | 42, 43 | 0d | Esnet |
